# Software Development

Schedule from MS Project, 2014-10-27 to 2015-07-03, costs in $, A marks actual dates.

## Calendars

- Standard: Mon-Fri 08:00-12:00, 13:00-17:00; Sat-Sun off.

## Resources

| Resource | Rate |
| --- | --- |
| Kadra zarządzająca | 50 |
| Project Manager | 45 |
| Analityk | 40 |
| Deweloper | 35 |
| Testerzy | 20 |
| Trenerzy | 20 |
| Pomoc/Helpdesk | 15 |
| Deployment | 20 |
| Project Support | 20 |

## Schedule

| ID | WBS | Task | Type | Duration | Start | Finish | Predecessors | Complete | Remaining | Total slack | Free slack | Resources | Work | Actual work | Cost | Actual cost | Sprint |
| --- | --- | --- | --- | --- | --- | --- | --- | --- | --- | --- | --- | --- | --- | --- | --- | --- | --- |
| 1 | 1 | **Analiza, ustalenie wymagań** |  | 15d | 2014-10-27 A | 2014-11-14 |  | 56% | 6.67d |  |  |  | 80h | 40h | 3,400 | 1,600 |  |
| 2 | 1.1 | Przeprowadzenie analizy wymagań |  | 5d | 2014-10-27 A | 2014-10-31 A |  | 100% |  |  |  | Analityk | 40h | 40h | 1,600 | 1,600 |  |
| 3 | 1.2 | Zapisanie wstępnego budżetu |  | 2d | 2014-11-03 | 2014-11-04 | 2 |  |  | 0d |  | Project Manager | 16h |  | 720 |  |  |
| 4 | 1.3 | Przeprowadzenie recencji budżetu/specyfikacji z resztą teamu |  | 4h | 2014-11-05 | 2014-11-05 | 3 |  |  | 0d |  | Project Manager; Analityk | 8h |  | 340 |  |  |
| 5 | 1.4 | Zaplanowanie kalendarza wypuszczania wersji produktu |  | 1d | 2014-11-05 | 2014-11-06 | 4 |  |  | 0d |  | Project Manager | 8h |  | 360 |  |  |
| 6 | 1.5 | Zdobycie zgody na dalsze działania przy zaplanowanym budżecie, kalendarzu I specyfikacji |  | 4h | 2014-11-06 | 2014-11-06 | 5 |  |  | 0d |  | Kadra zarządzająca; Project Manager | 8h |  | 380 |  |  |
| 7 | 1.6 | Analiza zakończona | milestone | 0d | 2014-11-06 | 2014-11-06 | 6 |  |  | 0d |  |  |  |  |  |  |  |
| 8 | 2 | **Projektowanie** |  | 14.5d | 2014-11-07 | 2014-11-27 |  |  |  | 55d | 0d |  | 120h |  | 5,100 |  |  |
| 9 | 2.1 | Recenzja wstępnej specyfikacji oprogramowania |  | 2d | 2014-11-07 | 2014-11-10 | 7 |  |  | 59d | 0d | Analityk | 16h |  | 640 |  |  |
| 10 | 2.2 | Sporządzenie wymagań funkcjonalnych |  | 5d | 2014-11-11 | 2014-11-17 | 9 |  |  | 59d | 0d | Analityk | 40h |  | 1,600 |  |  |
| 11 | 2.3 | Sporządzenie prototypu na bazie wymagań funkcjonalnych |  | 4d | 2014-11-18 | 2014-11-21 | 10 |  |  | 59d | 0d | Analityk | 32h |  | 1,280 |  |  |
| 12 | 2.4 | Recejzja wymagań funkcjonalnych |  | 2d | 2014-11-24 | 2014-11-25 | 11 |  |  | 59d | 0d | Kadra zarządzająca | 16h |  | 800 |  |  |
| 13 | 2.5 | Korekty wymagań funkcjonalnych po spotkaniu z klientem |  | 1d | 2014-11-26 | 2014-11-26 | 12 |  |  | 59d | 0d | Kadra zarządzająca | 8h |  | 400 |  |  |
| 14 | 2.6 | Pozywkanie zezwolenia na dalsze prace |  | 4h | 2014-11-27 | 2014-11-27 | 13 |  |  | 59d | 0d | Kadra zarządzająca; Project Manager | 8h |  | 380 |  |  |
| 15 | 2.7 | Projektowanie zakończone | milestone | 0d | 2014-11-27 | 2014-11-27 | 14 |  |  | 59d | 0d |  |  |  |  |  |  |
| 16 | 3 | **Implemementacja** |  | 67d | 2014-11-27 | 2015-03-02 | 8 |  |  | 54.5d | 0d |  | 264h |  | 9,240 |  | Sprint 1 |
| 17 | 3.1 | Review functional specifications |  | 1d | 2014-11-27 | 2014-11-28 | 15 |  |  | 59d | 0d | Deweloper | 8h |  | 280 |  |  |
| 18 | 3.2 | Identify modular/tiered design parameters |  | 1d | 2014-11-28 | 2014-12-01 | 17 |  |  | 59d | 0d | Deweloper | 8h |  | 280 |  | Sprint 1 |
| 19 | 3.3 | Assign development staff |  | 1d | 2014-12-01 | 2014-12-02 | 18 |  |  | 59d | 0d | Deweloper | 8h |  | 280 |  | Sprint 1 |
| 20 | 3.4 | Develop code |  | 30d | 2014-12-02 | 2015-01-13 | 19 |  |  | 59d | 0d | Deweloper [50%] | 120h |  | 4,200 |  | Sprint 1 |
| 21 | 3.5 | Developer testing (primary debugging) |  | 30d | 2015-01-13 | 2015-03-02 | 20FS-7.5% |  |  | 58.5d | 0d | Deweloper [50%] | 120h |  | 4,200 |  | Sprint 1 |
| 22 | 3.6 | Development complete | milestone | 0d | 2015-03-02 | 2015-03-02 | 21 |  |  | 58.5d | 4d |  |  |  |  |  | Sprint 1 |
| 23 | 4 | **Testowanie** |  | 39.5d | 2015-03-02 | 2015-04-24 | 16 |  |  | 50d |  |  | 280h |  | 5,600 |  | Sprint 1 |
| 24 | 4.1 | Develop unit test plans using product specifications |  | 4d | 2015-03-09 | 2015-03-12 | 15 |  |  | 50d | 0d | Testerzy | 32h |  | 640 |  | Sprint 1 |
| 25 | 4.2 | Develop integration test plans using product specifications |  | 4d | 2015-03-02 | 2015-03-06 | 15 |  |  | 85.5d |  | Testerzy | 32h |  | 640 |  | Sprint 1 |

| ID | WBS | Task | Type | Duration | Start | Finish | Predecessors | Total slack | Free slack | Resources | Work | Cost | Sprint |
| --- | --- | --- | --- | --- | --- | --- | --- | --- | --- | --- | --- | --- | --- |
| 26 | 4.3 | **Testy jednostkowe** |  | 16d | 2015-03-13 | 2015-04-03 |  | 50d |  |  | 120h | 2,400 | Sprint 1 |
| 27 | 4.3.1 | Review modular code |  | 5d | 2015-03-13 | 2015-03-20 | 24, 22 | 50d | 0d | Testerzy | 40h | 800 | Sprint 1 |
| 28 | 4.3.2 | Test component modules to product specifications |  | 2d | 2015-03-23 | 2015-03-24 | 22, 27 | 50d | 0d | Testerzy | 16h | 320 | Sprint 1 |
| 29 | 4.3.3 | Identify anomalies to product specifications |  | 3d | 2015-03-25 | 2015-03-27 | 28 | 50d | 0d | Testerzy | 24h | 480 | Sprint 1 |
| 30 | 4.3.4 | Modify code |  | 3d | 2015-03-30 | 2015-04-01 | 29 | 50d | 0d | Testerzy | 24h | 480 | Sprint 1 |
| 31 | 4.3.5 | Re-test modified code |  | 2d | 2015-04-02 | 2015-04-03 | 30 | 50d | 0d | Testerzy | 16h | 320 | Sprint 1 |
| 32 | 4.3.6 | Unit testing complete | milestone | 0d | 2015-04-03 | 2015-04-03 | 31 | 50d | 0d |  |  |  | Sprint 1 |
| 33 | 4.4 | **Testy integracyjne** |  | 15d | 2015-04-06 | 2015-04-24 |  | 50d |  |  | 96h | 1,920 | Sprint 1 |
| 34 | 4.4.1 | Test module integration |  | 5d | 2015-04-06 | 2015-04-10 | 32 | 50d | 0d | Testerzy | 40h | 800 | Sprint 1 |
| 35 | 4.4.2 | Identify anomalies to specifications |  | 2d | 2015-04-13 | 2015-04-17 | 34 | 50d | 0d | Testerzy | 16h | 320 | Sprint 1 |
| 36 | 4.4.3 | Modify code |  | 3d | 2015-04-20 | 2015-04-22 | 35 | 50d | 0d | Testerzy | 24h | 480 | Sprint 1 |
| 37 | 4.4.4 | Re-test modified code |  | 2d | 2015-04-23 | 2015-04-24 | 36 | 50d | 0d | Testerzy | 16h | 320 | Sprint 1 |
| 38 | 4.4.5 | Integration testing complete | milestone | 0d | 2015-04-24 | 2015-04-24 | 37 | 50d |  |  |  |  | Sprint 1 |
| 39 | 5 | **Dokumentacja** |  | 56.5d | 2014-11-27 | 2015-02-13 | 8 | 100d |  |  | 672h | 10,080 | Sprint 1 |
| 40 | 5.1 | **Dokumentacja** |  | 56.5d | 2014-11-27 | 2015-02-13 |  | 100d |  |  | 336h | 5,040 | Sprint 1 |
| 41 | 5.1.1 | Develop Help specification |  | 1d | 2014-11-27 | 2014-11-28 | 15 | 117d | 17d | Pomoc/Helpdesk | 8h | 120 | Sprint 1 |
| 42 | 5.1.2 | Develop Help system |  | 3w | 2014-12-23 | 2015-02-06 | 41, 20FS-5% | 100d | 0d | Pomoc/Helpdesk | 120h | 1,800 | Sprint 1 |
| 43 | 5.1.3 | Review Help documentation |  | 3d | 2015-02-09 | 2015-02-11 | 42 | 100d | 0d | Pomoc/Helpdesk | 24h | 360 | Sprint 1 |
| 44 | 5.1.4 | Incorporate Help documentation feedback |  | 2d | 2015-02-12 | 2015-02-13 | 43 | 100d | 0d | Pomoc/Helpdesk | 16h | 240 | Sprint 1 |
| 45 | 5.1.5 | Develop user manuals specifications |  | 2d | 2014-11-27 | 2014-12-01 | 15 | 135.5d | 16d | Pomoc/Helpdesk | 16h | 240 | Sprint 1 |
| 46 | 5.1.6 | Develop user manuals |  | 3w | 2014-12-23 | 2015-01-13 | 45, 20FS-5% | 119.5d | 0d | Pomoc/Helpdesk | 120h | 1,800 | Sprint 1 |
| 47 | 5.1.7 | Review all user documentation |  | 2d | 2015-01-13 | 2015-01-15 | 46 | 119.5d | 0d | Pomoc/Helpdesk | 16h | 240 | Sprint 1 |
| 48 | 5.1.8 | Incorporate user documentation feedback |  | 2d | 2015-01-15 | 2015-01-19 | 47 | 119.5d | 19.5d | Pomoc/Helpdesk | 16h | 240 | Sprint 1 |
| 49 | 5.1.9 | Documentation complete | milestone | 0d | 2015-02-13 | 2015-02-13 | 44, 48 | 100d |  |  |  |  | Sprint 1 |
| 50 | 5.2 | Develop Help specification |  | 1d | 2014-11-27 | 2014-11-28 | 15 | 135.5d | 17d | Pomoc/Helpdesk | 8h | 120 | Sprint 1 |
| 51 | 5.3 | Develop Help system |  | 3w | 2014-12-23 | 2015-01-13 | 50, 20FS-5% | 118.5d | 0d | Pomoc/Helpdesk | 120h | 1,800 | Sprint 1 |
| 52 | 5.4 | Review Help documentation |  | 3d | 2015-01-13 | 2015-01-16 | 51 | 118.5d | 0d | Pomoc/Helpdesk | 24h | 360 | Sprint 1 |
| 53 | 5.5 | Incorporate Help documentation feedback |  | 2d | 2015-01-16 | 2015-01-20 | 52 | 118.5d | 0d | Pomoc/Helpdesk | 16h | 240 | Sprint 1 |
| 54 | 5.6 | Develop user manuals specifications |  | 2d | 2014-11-27 | 2014-12-01 | 15 | 135.5d | 16d | Pomoc/Helpdesk | 16h | 240 | Sprint 1 |
| 55 | 5.7 | Develop user manuals |  | 3w | 2014-12-23 | 2015-01-13 | 54, 20FS-5% | 119.5d | 0d | Pomoc/Helpdesk | 120h | 1,800 | Sprint 1 |
| 56 | 5.8 | Review all user documentation |  | 2d | 2015-01-13 | 2015-01-15 | 55 | 119.5d | 0d | Pomoc/Helpdesk | 16h | 240 | Sprint 1 |
| 57 | 5.9 | Incorporate user documentation feedback |  | 2d | 2015-01-15 | 2015-01-19 | 56 | 119.5d | 1d | Pomoc/Helpdesk | 16h | 240 | Sprint 1 |
| 58 | 5.10 | Documentation complete | milestone | 0d | 2015-01-20 | 2015-01-20 | 57, 53 | 118.5d |  |  |  |  | Sprint 1 |

| ID | WBS | Task | Type | Duration | Start | Finish | Predecessors | Total slack | Resources | Work | Cost | Sprint |
| --- | --- | --- | --- | --- | --- | --- | --- | --- | --- | --- | --- | --- |
| 59 | 6 | **Deployment** |  | 5d | 2015-02-12 | 2015-02-18 |  |  |  | 40h | 800 | Sprint 1 |
| 60 | 6.1 | Determine final deployment strategy |  | 1d | 2015-02-12 | 2015-02-12 |  | 0d | Deployment | 8h | 160 | Sprint 1 |
| 61 | 6.2 | Develop deployment methodology |  | 1d | 2015-02-13 | 2015-02-13 | 60 | 0d | Deployment | 8h | 160 | Sprint 1 |
| 62 | 6.3 | Secure deployment resources |  | 1d | 2015-02-16 | 2015-02-16 | 61 | 0d | Deployment | 8h | 160 | Sprint 1 |
| 63 | 6.4 | Train support staff |  | 1d | 2015-02-17 | 2015-02-17 | 62 | 0d | Deployment | 8h | 160 |  |
| 64 | 6.5 | Deploy software |  | 1d | 2015-02-18 | 2015-02-18 | 63 | 0d | Deployment | 8h | 160 |  |
| 65 | 6.6 | Deployment complete | milestone | 0d | 2015-02-18 | 2015-02-18 | 64 | 0d |  |  |  |  |
| 66 | 7 | **Post Implementation Review** |  | 3d | 2015-02-19 | 2015-02-23 |  | 0d |  | 24h | 1,080 |  |
| 67 | 7.1 | Document lessons learned |  | 1d | 2015-02-19 | 2015-02-19 | 65, 109 | 0d | Project Manager | 8h | 360 |  |
| 68 | 7.2 | Distribute to team members |  | 1d | 2015-02-20 | 2015-02-20 | 67 | 0d | Project Manager | 8h | 360 |  |
| 69 | 7.3 | Create software maintenance team |  | 1d | 2015-02-23 | 2015-02-23 | 68 | 0d | Project Manager | 8h | 360 |  |
| 70 | 7.4 | Post implementation review complete | milestone | 0d | 2015-02-23 | 2015-02-23 | 69 | 0d |  |  |  |  |
| 71 | 8 | Sprint 1 Complete | milestone | 0d | 2015-02-23 | 2015-02-23 | 70 | 0d |  |  |  | Sprint1 |
| 72 | 9 | **Implemementacja** |  | 67d | 2015-02-24 | 2015-05-27 |  | 0d |  | 264h | 9,240 | Sprint 2 |
| 73 | 9.1 | recenza wymagań funkcjolanych |  | 2d | 2015-02-24 | 2015-02-25 | 71 | 0d | Deweloper [50%] | 8h | 280 | Sprint 2 |
| 74 | 9.2 | Przydział załogi deweloperskiej |  | 4d | 2015-02-26 | 2015-03-04 | 73 | 0d | Deweloper [50%] | 16h | 560 | Sprint 2 |
| 75 | 9.3 | Develeping (rozwijanie) aplikacji |  | 30d | 2015-03-05 | 2015-04-15 | 74 | 0d | Deweloper [50%] | 120h | 4,200 | Sprint 2 |
| 76 | 9.4 | Debugowanie i rozwijanie testów |  | 30d | 2015-04-16 | 2015-05-27 | 75FS-7.5% | 0d | Deweloper [50%] | 120h | 4,200 | Sprint 2 |
| 77 | 9.5 | Development zakończony | milestone | 0d | 2015-05-27 | 2015-05-27 | 76 | 0d |  |  |  | Sprint 2 |
| 78 | 10 | **Testowanie** |  | 94d | 2015-02-24 | 2015-07-03 |  | 0d |  | 280h | 5,780 | Sprint 2 |
| 79 | 10.1 | Tworzenie planu testów jednostkowych |  | 8d | 2015-02-24 | 2015-04-16 | 71 | 29.5d | Testerzy [50%] | 32h | 640 | Sprint 2 |
| 80 | 10.2 | Tworzenie planu testów czasu wykonania |  | 8d | 2015-02-24 | 2015-04-17 | 71 | 55.5d | Testerzy [50%] | 32h | 640 | Sprint 2 |
| 81 | 10.3 | **Testy jednostkowe** |  | 15d | 2015-05-28 | 2015-06-17 |  | 0d |  | 120h | 2,580 | Sprint 2 |
| 82 | 10.3.1 | Code review |  | 5d | 2015-05-28 | 2015-06-03 | 77, 79 | 0d | Testerzy | 40h | 800 | Sprint 2 |
| 83 | 10.3.2 | Testowanie kodu w odniesieniu do specyfikacji |  | 2d | 2015-06-04 | 2015-06-05 | 77, 82 | 0d | Testerzy | 16h | 320 | Sprint 2 |
| 84 | 10.3.3 | Identyfikacja niezgodności ze specyfikacją produktu |  | 3d | 2015-06-08 | 2015-06-10 | 83 | 0d | Testerzy; Deweloper [50%] | 24h | 660 | Sprint 2 |
| 85 | 10.3.4 | Modyfikacje kodu |  | 3d | 2015-06-11 | 2015-06-15 | 84 | 0d | Testerzy | 24h | 480 | Sprint 2 |
| 86 | 10.3.5 | Testowanie zmienionego kodu |  | 2d | 2015-06-16 | 2015-06-17 | 85 | 0d | Testerzy | 16h | 320 | Sprint 2 |
| 87 | 10.3.6 | Testowanie zakończone | milestone | 0d | 2015-06-17 | 2015-06-17 | 86 | 0d |  |  |  | Sprint 2 |

| ID | WBS | Task | Type | Duration | Start | Finish | Predecessors | Total slack | Free slack | Resources | Work | Cost | Sprint |
| --- | --- | --- | --- | --- | --- | --- | --- | --- | --- | --- | --- | --- | --- |
| 88 | 10.4 | **Testy integracyjne** |  | 12d | 2015-06-18 | 2015-07-03 |  | 0d |  |  | 96h | 1,920 | Sprint 2 |
| 89 | 10.4.1 | Testowanie zintegrowanych modułów |  | 5d | 2015-06-18 | 2015-06-24 | 87 | 0d |  | Testerzy | 40h | 800 | Sprint 2 |
| 90 | 10.4.2 | Identyfikacja anomalii w odniesieniu do specyfikacji produktu |  | 2d | 2015-06-25 | 2015-06-26 | 89 | 0d |  | Testerzy | 16h | 320 | Sprint 2 |
| 91 | 10.4.3 | Zmiany kodu |  | 3d | 2015-06-29 | 2015-07-01 | 90 | 0d |  | Testerzy | 24h | 480 | Sprint 2 |
| 92 | 10.4.4 | Testowanie zmienionego kodu |  | 2d | 2015-07-02 | 2015-07-03 | 91 | 0d |  | Testerzy | 16h | 320 | Sprint 2 |
| 93 | 10.4.5 | Testowanie integracyjne zakończone | milestone | 0d | 2015-07-03 | 2015-07-03 | 92 | 0d |  |  |  |  | Sprint 2 |
| 94 | 11 | **Dokumentacja** |  | 148d | 2014-10-27 | 2015-05-20 |  | 32d |  |  | 328h | 5,720 | Sprint 2 |
| 95 | 11.1 | Dokumentacja |  | 30.5d | 2014-10-27 | 2014-12-08 |  | 149.5d |  |  |  |  | Sprint 2 |
| 96 | 11.2 | Tworzenie systemu pomocy |  | 6w | 2015-03-26 | 2015-05-06 | 75FS-5% | 32d | 0d | Project Support [50%] | 120h | 2,400 | Sprint 2 |
| 97 | 11.3 | Recenzja dokumentacji supportowej |  | 6d | 2015-05-07 | 2015-05-14 | 96 | 32d | 0d | Project Support [50%] | 24h | 480 | Sprint 2 |
| 98 | 11.4 | Właczenie wyników feedbacku do dokumentacji supportowej |  | 4d | 2015-05-15 | 2015-05-20 | 97 | 32d | 0d | Project Support [50%] | 16h | 320 | Sprint 2 |
| 99 | 11.5 | Rozwijanie specyfikacji instrukcji użytkownika |  | 2d | 2015-02-24 | 2015-02-25 | 71 | 73d | 20d | Pomoc/Helpdesk | 16h | 240 | Sprint 2 |
| 100 | 11.6 | Rozwijanie instrukcji użytkownika |  | 3w | 2015-03-26 | 2015-04-15 | 75FS-5%, 99 | 53d | 0d | Pomoc/Helpdesk | 120h | 1,800 | Sprint 2 |
| 101 | 11.7 | Recenzja dokumentacji użytkownika |  | 2d | 2015-04-16 | 2015-04-17 | 100 | 53d | 0d | Pomoc/Helpdesk | 16h | 240 | Sprint 2 |
| 102 | 11.8 | Zmiana pod kątem feedback'u użytkownika |  | 2d | 2015-04-20 | 2015-04-21 | 101 | 53d | 21d | Pomoc/Helpdesk | 16h | 240 | Sprint 2 |
| 103 | 11.9 | Tworzenie dokumentacji zakończone | milestone | 0d | 2015-05-20 | 2015-05-20 | 98, 102 | 32d |  |  |  |  | Sprint 2 |
| 104 | 12 | **Deployment** |  | 4d | 2014-10-27 | 2014-10-30 |  | 79d |  |  | 32h | 640 | Sprint 2 |
| 105 | 12.1 | Określenie ostatecznej strategii wdrażania |  | 1d | 2014-10-27 | 2014-10-27 |  | 79d | 0d | Deployment | 8h | 160 | Sprint 2 |
| 106 | 12.2 | Określenie metodologii wdrażania |  | 1d | 2014-10-28 | 2014-10-28 | 105 | 79d | 0d | Deployment | 8h | 160 | Sprint 2 |
| 107 | 12.3 | Szkolenie teamu supportowego |  | 1d | 2014-10-29 | 2014-10-29 | 106 | 79d | 0d | Deployment | 8h | 160 | Sprint 2 |
| 108 | 12.4 | Wdrożenie |  | 1d | 2014-10-30 | 2014-10-30 | 107 | 79d | 0d | Deployment | 8h | 160 | Sprint 2 |
| 109 | 12.5 | Wdrożenie ukończone | milestone | 0d | 2014-10-30 | 2014-10-30 | 108 | 79d |  |  |  |  | Sprint 2 |
